Schedule from MS Project, 2019-06-03 to 2019-10-21, costs in €.

## Calendars

- Intranet_KlinikIT: Mon-Fri 08:00-12:00, 13:00-17:00; Sat-Sun off. Exceptions (off unless hours are given): 2019-10-03 (Tag der deutschen Einheit).

## Resources

| Resource | Group | Rate |
| --- | --- | --- |
| Lukas Schmidt | SC - Projektleiter | 156.25 |
| Robin Behrendt | SE - Teamleiter Entwicklung | 143.75 |
| Leon König | SC - Scrum Master | 156.25 |
| Leon Kuß | E - Entwickler | 100 |
| Gerrit Peitz | E - Entwickler | 100 |
| Luca Siekmann | E - Entwickler | 100 |
| Theo Test | SE - Teamleiter Test | 143.75 |
| Vera Versuch | E - Tester | 100 |
| Karl Kontrolle | E - Tester | 100 |
| Petra Prüfung | E - Tester | 100 |
| Ina Integration | I - Systemintegrator | 93.75 |
| Anton Ausroller | I - Systemintegrator | 93.75 |
| Anna Lyse | C - Business Analyst | 112.5 |
| Andreas Auswertung | C - Business Analyst | 112.5 |
| Tobias Training | C - Coach | 112.5 |
| Arthur Architektur | C - Software Architekt |  |
| Dennis Design | E - Software Designer |  |

## Schedule

| ID | WBS | Task | Type | Duration | Start | Finish | Predecessors | Total slack | Free slack | Constraint | Resources | Work | Cost |
| --- | --- | --- | --- | --- | --- | --- | --- | --- | --- | --- | --- | --- | --- |
| 1 | 1 | Projektstart | milestone | 0d | 2019-06-03 | 2019-06-03 |  | 57.5d | 0d | start no earlier than 2019-06-03 |  |  |  |
| 2 | 2 | **Analysephase** |  | 15d | 2019-06-03 | 2019-06-21 | 1SS | 68d | 0d |  |  | 496h | 55,400 |
| 3 | 2.1 | Ist-Analyse durchführen |  | 10d | 2019-06-03 | 2019-06-14 | 1SS | 68d | 0d |  | Andreas Auswertung; Anna Lyse; Gerrit Peitz; Leon Kuß; Luca Siekmann; Robin Behrendt | 416h | 46,400 |
| 4 | 2.2 | Anforderungen erheben |  | 5d | 2019-06-17 | 2019-06-21 | 3 | 68d | 0d |  | Andreas Auswertung; Anna Lyse | 80h | 9,000 |
| 5 | 3 | **Konzeptionsphase** |  | 8.5d | 2019-06-24 | 2019-07-04 | 2 | 68d | 0d |  |  | 144h | 6,550 |
| 6 | 3.1 | Grobkonzept vervollständigen |  | 1.5d | 2019-06-24 | 2019-06-25 | 3, 4 | 68d | 0d |  | Andreas Auswertung; Arthur Architektur | 24h | 1,350 |
| 7 | 3.2 | Feinkonzept erstellen |  | 5d | 2019-06-25 | 2019-07-02 | 6 | 68d | 0d |  | Arthur Architektur; Dennis Design | 80h |  |
| 8 | 3.3 | Berechtigungskonzept erstellen |  | 2.5d | 2019-06-25 | 2019-06-27 | 6 | 70.5d | 2.5d |  | Andreas Auswertung; Anna Lyse | 24h | 2,700 |
| 9 | 3.4 | Product-Backlog anlegen |  | 2d | 2019-07-02 | 2019-07-04 | 7, 8 | 68d |  |  | Lukas Schmidt | 16h | 2,500 |
| 10 | 4 | **Realisierungsphase** |  | 76d? | 2019-07-04 | 2019-10-21 | 5 | 0d |  |  |  | 24h | 2,625 |
| 11 | 4.1 | **Sprints** |  | 76d? | 2019-07-04 | 2019-10-21 |  | 0d |  |  |  | 24h | 2,625 |
| 12 | 4.1.1 | **Sprint 1** |  | 8d? | 2019-07-04 | 2019-07-16 |  | 68d |  |  |  | 24h | 2,625 |
| 13 | 4.1.1.1 | Sprint Planning 1 |  | 0.5d | 2019-07-04 | 2019-07-04 |  | 75.5d |  | start no earlier than 2019-06-03 | Lukas Schmidt; Dennis Design; Leon König; Leon Kuß; Luca Siekmann; Robin Behrendt | 24h | 2,625 |
| 14 | 4.1.1.2 | Kernsystem implementieren |  | 8d | 2019-07-04 | 2019-07-16 |  | 68d |  |  |  |  |  |
| 15 | 4.1.1.3 | Test vorbereiten 1 |  | 1d | 2019-07-04 | 2019-07-05 |  | 75d |  | start no earlier than 2019-06-03 |  |  |  |
| 16 | 4.1.1.4 | Refinement 1 |  | 0.5d | 2019-07-04 | 2019-07-04 |  | 75.5d |  | start no earlier than 2019-06-10 |  |  |  |
| 17 | 4.1.1.5 | Betriebshandbuch erstellen 1 |  | 1d? | 2019-07-04 | 2019-07-05 |  | 75d |  |  |  |  |  |
| 18 | 4.1.1.6 | Sprint Review & Retrospektive 1 |  | 0.5d | 2019-07-04 | 2019-07-04 |  | 75.5d |  | start no earlier than 2019-06-17 |  |  |  |
| 19 | 4.1.2 | **Sprint 2** |  | 1d? | 2019-07-04 | 2019-07-05 |  | 75d |  |  |  |  |  |
| 20 | 4.1.2.1 | Sprint Planning 2 |  | 0.5d | 2019-07-04 | 2019-07-04 |  | 75.5d |  | start no earlier than 2019-06-17 |  |  |  |
| 21 | 4.1.2.2 | Prozesse implementieren 1 |  | 1d? | 2019-07-04 | 2019-07-05 |  | 75d |  |  |  |  |  |
| 22 | 4.1.2.3 | Test vorbereiten 2 |  | 1d | 2019-07-04 | 2019-07-05 |  | 75d |  | start no earlier than 2019-06-17 |  |  |  |
| 23 | 4.1.2.4 | Test durchführen 1 |  | 1d | 2019-07-04 | 2019-07-05 |  | 75d |  | start no earlier than 2019-06-03 |  |  |  |
| 24 | 4.1.2.5 | Software installieren 1 |  | 1d | 2019-07-04 | 2019-07-05 |  | 75d |  | start no earlier than 2019-06-03 |  |  |  |
| 25 | 4.1.2.6 | Nutzerakzeptanzumfrage durchführen 1 |  | 1d | 2019-07-04 | 2019-07-05 |  | 75d |  | start no earlier than 2019-06-03 |  |  |  |
| 26 | 4.1.2.7 | Nutzerakzeptanzumfrage auswerten 1 |  | 1d | 2019-07-04 | 2019-07-05 |  | 75d |  | start no earlier than 2019-06-03 |  |  |  |
| 27 | 4.1.2.8 | Performanceziele überprüfen 1 |  | 1d | 2019-07-04 | 2019-07-05 |  | 75d |  | start no earlier than 2019-06-03 |  |  |  |
| 28 | 4.1.2.9 | Fehler beheben 1 |  | 1d | 2019-07-04 | 2019-07-05 |  | 75d |  | start no earlier than 2019-06-03 |  |  |  |
| 29 | 4.1.2.10 | Refinement 2 |  | 0.5d | 2019-07-04 | 2019-07-04 |  | 75.5d |  | start no earlier than 2019-06-24 |  |  |  |
| 30 | 4.1.2.11 | Betriebshandbuch erstellen 2 |  | 1d? | 2019-07-04 | 2019-07-05 |  | 75d |  |  |  |  |  |
| 31 | 4.1.2.12 | Sprint Review & Retrospektive 2 |  | 0.5d | 2019-07-04 | 2019-07-04 |  | 75.5d |  | start no earlier than 2019-07-01 |  |  |  |

Notes:
- 3: v
- 4: v

| ID | WBS | Task | Duration | Start | Finish | Total slack | Constraint |
| --- | --- | --- | --- | --- | --- | --- | --- |
| 32 | 4.1.3 | **Sprint 3** | 7d? | 2019-07-04 | 2019-07-15 | 69d |  |
| 33 | 4.1.3.1 | Sprint Planning 3 | 0.5d | 2019-07-04 | 2019-07-04 | 75.5d | start no earlier than 2019-07-01 |
| 34 | 4.1.3.2 | Prozesse implementieren 2 | 1d? | 2019-07-04 | 2019-07-05 | 75d |  |
| 35 | 4.1.3.3 | Test vorbereiten 3 | 1d | 2019-07-04 | 2019-07-05 | 75d | start no earlier than 2019-07-01 |
| 36 | 4.1.3.4 | Test durchführen 2 | 1d | 2019-07-04 | 2019-07-05 | 75d | start no earlier than 2019-06-17 |
| 37 | 4.1.3.5 | Software installieren 2 | 1d | 2019-07-04 | 2019-07-05 | 75d | start no earlier than 2019-06-17 |
| 38 | 4.1.3.6 | Nutzerakzeptanzumfrage durchführen 2 | 1d | 2019-07-04 | 2019-07-05 | 75d | start no earlier than 2019-06-17 |
| 39 | 4.1.3.7 | Nutzerakzeptanzumfrage auswerten 2 | 1d | 2019-07-04 | 2019-07-05 | 75d | start no earlier than 2019-06-17 |
| 40 | 4.1.3.8 | Performanceziele überprüfen 2 | 1d | 2019-07-04 | 2019-07-05 | 75d | start no earlier than 2019-06-17 |
| 41 | 4.1.3.9 | Fehler beheben 2 | 1d | 2019-07-04 | 2019-07-05 | 75d | start no earlier than 2019-06-17 |
| 42 | 4.1.3.10 | Refinement 3 | 0.5d | 2019-07-08 | 2019-07-08 | 74d | start no earlier than 2019-07-08 |
| 43 | 4.1.3.11 | Betriebshandbuch erstellen 3 | 1d? | 2019-07-04 | 2019-07-05 | 75d |  |
| 44 | 4.1.3.12 | Sprint Review & Retrospektive 3 | 0.5d | 2019-07-15 | 2019-07-15 | 69d | start no earlier than 2019-07-15 |
| 45 | 4.1.4 | **Sprint 4** | 17d? | 2019-07-04 | 2019-07-29 | 59d |  |
| 46 | 4.1.4.1 | Sprint Planning 4 | 0.5d | 2019-07-15 | 2019-07-15 | 69d | start no earlier than 2019-07-15 |
| 47 | 4.1.4.2 | Prozesse implementieren 3 | 1d? | 2019-07-04 | 2019-07-05 | 75d |  |
| 48 | 4.1.4.3 | Test vorbereiten 4 | 1d | 2019-07-15 | 2019-07-15 | 68.5d | start no earlier than 2019-07-15 |
| 49 | 4.1.4.4 | Test durchführen 3 | 1d | 2019-07-04 | 2019-07-05 | 75d | start no earlier than 2019-07-01 |
| 50 | 4.1.4.5 | Software installieren 3 | 1d | 2019-07-04 | 2019-07-05 | 75d | start no earlier than 2019-07-01 |
| 51 | 4.1.4.6 | Nutzerakzeptanzumfrage durchführen 3 | 1d | 2019-07-04 | 2019-07-05 | 75d | start no earlier than 2019-07-01 |
| 52 | 4.1.4.7 | Nutzerakzeptanzumfrage auswerten 3 | 1d | 2019-07-04 | 2019-07-05 | 75d | start no earlier than 2019-07-01 |
| 53 | 4.1.4.8 | Performanceziele überprüfen 3 | 1d | 2019-07-04 | 2019-07-05 | 75d | start no earlier than 2019-07-01 |
| 54 | 4.1.4.9 | Fehler beheben 3 | 1d | 2019-07-04 | 2019-07-05 | 75d | start no earlier than 2019-07-01 |
| 55 | 4.1.4.10 | Refinement 4 | 0.5d | 2019-07-22 | 2019-07-22 | 64d | start no earlier than 2019-07-22 |
| 56 | 4.1.4.11 | Betriebshandbuch erstellen 4 | 1d? | 2019-07-04 | 2019-07-05 | 75d |  |
| 57 | 4.1.4.12 | Sprint Review & Retrospektive 4 | 0.5d | 2019-07-29 | 2019-07-29 | 59d | start no earlier than 2019-07-29 |

| ID | WBS | Task | Duration | Start | Finish | Total slack | Constraint |
| --- | --- | --- | --- | --- | --- | --- | --- |
| 58 | 4.1.5 | **Sprint 5** | 27d? | 2019-07-04 | 2019-08-12 | 49d |  |
| 59 | 4.1.5.1 | Sprint Planning 5 | 0.5d | 2019-07-29 | 2019-07-29 | 59d | start no earlier than 2019-07-29 |
| 60 | 4.1.5.2 | Prozesse implementieren 4 | 1d? | 2019-07-04 | 2019-07-05 | 75d |  |
| 61 | 4.1.5.3 | Test vorbereiten 5 | 1d | 2019-07-29 | 2019-07-29 | 58.5d | start no earlier than 2019-07-29 |
| 62 | 4.1.5.4 | Test durchführen 4 | 1d | 2019-07-15 | 2019-07-15 | 68.5d | start no earlier than 2019-07-15 |
| 63 | 4.1.5.5 | Software installieren 4 | 1d | 2019-07-15 | 2019-07-15 | 68.5d | start no earlier than 2019-07-15 |
| 64 | 4.1.5.6 | Nutzerakzeptanzumfrage durchführen 4 | 1d | 2019-07-15 | 2019-07-15 | 68.5d | start no earlier than 2019-07-15 |
| 65 | 4.1.5.7 | Nutzerakzeptanzumfrage auswerten 4 | 1d | 2019-07-15 | 2019-07-15 | 68.5d | start no earlier than 2019-07-15 |
| 66 | 4.1.5.8 | Performanceziele überprüfen 4 | 1d | 2019-07-15 | 2019-07-15 | 68.5d | start no earlier than 2019-07-15 |
| 67 | 4.1.5.9 | Fehler beheben 4 | 1d | 2019-07-15 | 2019-07-15 | 68.5d | start no earlier than 2019-07-15 |
| 68 | 4.1.5.10 | Refinement 5 | 0.5d | 2019-08-05 | 2019-08-05 | 54d | start no earlier than 2019-08-05 |
| 69 | 4.1.5.11 | Betriebshandbuch erstellen 5 | 1d? | 2019-07-04 | 2019-07-05 | 75d |  |
| 70 | 4.1.5.12 | Sprint Review & Retrospektive 5 | 0.5d | 2019-08-12 | 2019-08-12 | 49d | start no earlier than 2019-08-12 |
| 71 | 4.1.6 | **Sprint 6** | 37d? | 2019-07-04 | 2019-08-26 | 39d |  |
| 72 | 4.1.6.1 | Sprint Planning 6 | 0.5d | 2019-08-12 | 2019-08-12 | 49d | start no earlier than 2019-08-12 |
| 73 | 4.1.6.2 | "Schmankerl" implementieren 1 | 1d? | 2019-07-04 | 2019-07-05 | 75d |  |
| 74 | 4.1.6.3 | Test vorbereiten 6 | 1d | 2019-08-12 | 2019-08-12 | 48.5d | start no earlier than 2019-08-12 |
| 75 | 4.1.6.4 | Test durchführen 5 | 1d | 2019-07-29 | 2019-07-29 | 58.5d | start no earlier than 2019-07-29 |
| 76 | 4.1.6.5 | Software installieren 5 | 1d | 2019-07-29 | 2019-07-29 | 58.5d | start no earlier than 2019-07-29 |
| 77 | 4.1.6.6 | Nutzerakzeptanzumfrage durchführen 5 | 1d | 2019-07-29 | 2019-07-29 | 58.5d | start no earlier than 2019-07-29 |
| 78 | 4.1.6.7 | Nutzerakzeptanzumfrage auswerten 5 | 1d | 2019-07-29 | 2019-07-29 | 58.5d | start no earlier than 2019-07-29 |
| 79 | 4.1.6.8 | Performanceziele überprüfen 5 | 1d | 2019-07-29 | 2019-07-29 | 58.5d | start no earlier than 2019-07-29 |
| 80 | 4.1.6.9 | Fehler beheben 5 | 1d | 2019-07-29 | 2019-07-29 | 58.5d | start no earlier than 2019-07-29 |
| 81 | 4.1.6.10 | Refinement 6 | 0.5d | 2019-08-19 | 2019-08-19 | 44d | start no earlier than 2019-08-19 |
| 82 | 4.1.6.11 | Betriebshandbuch erstellen 6 | 1d? | 2019-07-04 | 2019-07-05 | 75d |  |
| 83 | 4.1.6.12 | Sprint Review & Retrospektive 6 | 0.5d | 2019-08-26 | 2019-08-26 | 39d | start no earlier than 2019-08-26 |

| ID | WBS | Task | Duration | Start | Finish | Total slack | Constraint |
| --- | --- | --- | --- | --- | --- | --- | --- |
| 84 | 4.1.7 | **Sprint 7** | 47d? | 2019-07-04 | 2019-09-09 | 29d |  |
| 85 | 4.1.7.1 | Sprint Planning 7 | 0.5d | 2019-08-26 | 2019-08-26 | 39d | start no earlier than 2019-08-26 |
| 86 | 4.1.7.2 | "Schmankerl" implmentieren 2 | 1d? | 2019-07-04 | 2019-07-05 | 75d |  |
| 87 | 4.1.7.3 | Test vorbereiten 7 | 1d | 2019-08-26 | 2019-08-26 | 38.5d | start no earlier than 2019-08-26 |
| 88 | 4.1.7.4 | Test durchführen 6 | 1d | 2019-08-12 | 2019-08-12 | 48.5d | start no earlier than 2019-08-12 |
| 89 | 4.1.7.5 | Software installieren 6 | 1d | 2019-08-12 | 2019-08-12 | 48.5d | start no earlier than 2019-08-12 |
| 90 | 4.1.7.6 | Nutzerakzeptanzumfrage durchführen 6 | 1d | 2019-08-12 | 2019-08-12 | 48.5d | start no earlier than 2019-08-12 |
| 91 | 4.1.7.7 | Nutzerakzeptanzumfrage auswerten 6 | 1d | 2019-08-12 | 2019-08-12 | 48.5d | start no earlier than 2019-08-12 |
| 92 | 4.1.7.8 | Performanceziele überprüfen 6 | 1d | 2019-08-12 | 2019-08-12 | 48.5d | start no earlier than 2019-08-12 |
| 93 | 4.1.7.9 | Fehler beheben 6 | 1d | 2019-08-12 | 2019-08-12 | 48.5d | start no earlier than 2019-08-12 |
| 94 | 4.1.7.10 | Refinement 7 | 0.5d | 2019-09-02 | 2019-09-02 | 34d | start no earlier than 2019-09-02 |
| 95 | 4.1.7.11 | Betriebshandbuch erstellen 7 | 1d? | 2019-07-04 | 2019-07-05 | 75d |  |
| 96 | 4.1.7.12 | Sprint Review & Retrospektive 7 | 0.5d | 2019-09-09 | 2019-09-09 | 29d | start no earlier than 2019-09-09 |
| 97 | 4.1.8 | **Sprint 8** | 57d? | 2019-07-04 | 2019-09-23 | 19d |  |
| 98 | 4.1.8.1 | Sprint Planning 8 | 0.5d | 2019-09-09 | 2019-09-09 | 29d | start no earlier than 2019-09-09 |
| 99 | 4.1.8.2 | "Schmankerl" implementieren 3 | 1d? | 2019-07-04 | 2019-07-05 | 75d |  |
| 100 | 4.1.8.3 | Zusatzfunktionen implementieren 1 | 1d? | 2019-07-04 | 2019-07-05 | 75d |  |
| 101 | 4.1.8.4 | Test vorbereiten 8 | 1d | 2019-09-09 | 2019-09-09 | 28.5d | start no earlier than 2019-09-09 |
| 102 | 4.1.8.5 | Test durchführen 7 | 1d | 2019-08-26 | 2019-08-26 | 38.5d | start no earlier than 2019-08-26 |
| 103 | 4.1.8.6 | Software installieren 7 | 1d | 2019-08-26 | 2019-08-26 | 38.5d | start no earlier than 2019-08-26 |
| 104 | 4.1.8.7 | Nutzerakzeptanzumfrage durchführen 7 | 1d | 2019-08-26 | 2019-08-26 | 38.5d | start no earlier than 2019-08-26 |
| 105 | 4.1.8.8 | Nutzerakzeptanzumfrage auswerten 7 | 1d | 2019-08-26 | 2019-08-26 | 38.5d | start no earlier than 2019-08-26 |
| 106 | 4.1.8.9 | Performanceziele überprüfen 7 | 1d | 2019-08-26 | 2019-08-26 | 38.5d | start no earlier than 2019-08-26 |
| 107 | 4.1.8.10 | Fehler beheben 7 | 1d | 2019-08-26 | 2019-08-26 | 38.5d | start no earlier than 2019-08-26 |
| 108 | 4.1.8.11 | Refinement 8 | 0.5d | 2019-09-16 | 2019-09-16 | 24d | start no earlier than 2019-09-16 |
| 109 | 4.1.8.12 | Betriebshandbuch erstellen 8 | 1d? | 2019-07-04 | 2019-07-05 | 75d |  |
| 110 | 4.1.8.13 | Sprint Review & Retrospektive 8 | 0.5d | 2019-09-23 | 2019-09-23 | 19d | start no earlier than 2019-09-23 |

| ID | WBS | Task | Duration | Start | Finish | Total slack | Constraint |
| --- | --- | --- | --- | --- | --- | --- | --- |
| 111 | 4.1.9 | **Sprint 9** | 66d? | 2019-07-04 | 2019-10-07 | 10d |  |
| 112 | 4.1.9.1 | Sprint Planning 9 | 0.5d | 2019-09-23 | 2019-09-23 | 19d | start no earlier than 2019-09-23 |
| 113 | 4.1.9.2 | Zusatzfunktionen implementieren 2 | 1d? | 2019-07-04 | 2019-07-05 | 75d |  |
| 114 | 4.1.9.3 | Test vorbereiten 9 | 1d | 2019-09-23 | 2019-09-23 | 18.5d | start no earlier than 2019-09-23 |
| 115 | 4.1.9.4 | Test durchführen 8 | 1d | 2019-09-09 | 2019-09-09 | 28.5d | start no earlier than 2019-09-09 |
| 116 | 4.1.9.5 | Software installieren 8 | 1d | 2019-09-09 | 2019-09-09 | 28.5d | start no earlier than 2019-09-09 |
| 117 | 4.1.9.6 | Nutzerakzeptanzumfrage durchführen 8 | 1d | 2019-09-09 | 2019-09-09 | 28.5d | start no earlier than 2019-09-09 |
| 118 | 4.1.9.7 | Nutzerakzeptanzumfrage auswerten 8 | 1d | 2019-09-09 | 2019-09-09 | 28.5d | start no earlier than 2019-09-09 |
| 119 | 4.1.9.8 | Performanceziele überprüfen 8 | 1d | 2019-09-09 | 2019-09-09 | 28.5d | start no earlier than 2019-09-09 |
| 120 | 4.1.9.9 | Fehler beheben 8 | 1d | 2019-09-09 | 2019-09-09 | 28.5d | start no earlier than 2019-09-09 |
| 121 | 4.1.9.10 | Refinement 9 | 0.5d | 2019-09-30 | 2019-09-30 | 14d | start no earlier than 2019-09-30 |
| 122 | 4.1.9.11 | Betriebshandbuch erstellen 9 | 1d? | 2019-07-04 | 2019-07-05 | 75d |  |
| 123 | 4.1.9.12 | Sprint Review & Retrospektive 9 | 0.5d | 2019-10-07 | 2019-10-07 | 10d | start no earlier than 2019-10-07 |
| 124 | 4.1.10 | **Sprint 10** | 76d? | 2019-07-04 | 2019-10-21 | 0d |  |
| 125 | 4.1.10.1 | Sprint Planning 10 | 0.5d | 2019-07-04 | 2019-07-04 | 75.5d |  |
| 126 | 4.1.10.2 | Zusatzfunktionen implementieren 3 | 1d? | 2019-07-04 | 2019-07-05 | 75d |  |
| 127 | 4.1.10.3 | Test vorbereiten 10 | 1d | 2019-10-07 | 2019-10-07 | 9.5d | start no earlier than 2019-10-07 |
| 128 | 4.1.10.4 | Test durchführen 9 | 1d | 2019-09-23 | 2019-09-23 | 18.5d | start no earlier than 2019-09-23 |
| 129 | 4.1.10.5 | Software installieren 9 | 1d | 2019-09-23 | 2019-09-23 | 18.5d | start no earlier than 2019-09-23 |
| 130 | 4.1.10.6 | Nutzerakzeptanzumfrage durchführen 9 | 1d | 2019-09-23 | 2019-09-23 | 18.5d | start no earlier than 2019-09-23 |
| 131 | 4.1.10.7 | Nutzerakzeptanzumfrage auswerten 9 | 1d | 2019-09-23 | 2019-09-23 | 18.5d | start no earlier than 2019-09-23 |
| 132 | 4.1.10.8 | Performanceziele überprüfen 9 | 1d | 2019-09-23 | 2019-09-23 | 18.5d | start no earlier than 2019-09-23 |
| 133 | 4.1.10.9 | Fehler beheben 9 | 1d | 2019-09-23 | 2019-09-23 | 18.5d | start no earlier than 2019-09-23 |
| 134 | 4.1.10.10 | Refinement 10 | 0.5d | 2019-10-14 | 2019-10-14 | 5d | start no earlier than 2019-10-14 |
| 135 | 4.1.10.11 | Schulungskonzept erarbeiten 1 | 1d? | 2019-07-04 | 2019-07-05 | 75d |  |
| 136 | 4.1.10.12 | Betriebshandbuch erstellen 10 | 1d? | 2019-07-04 | 2019-07-05 | 75d |  |
| 137 | 4.1.10.13 | Sprint Review & Retrospektive 10 | 0.5d | 2019-10-21 | 2019-10-21 | 0d | start no earlier than 2019-10-21 |

| ID | WBS | Task | Duration | Start | Finish | Total slack | Constraint |
| --- | --- | --- | --- | --- | --- | --- | --- |
| 138 | 4.2 | **Sprint 11** | 66.5d? | 2019-07-04 | 2019-10-07 | 9.5d |  |
| 139 | 4.2.1 | Test durchführen 10 | 1d | 2019-10-07 | 2019-10-07 | 9.5d | start no earlier than 2019-10-07 |
| 140 | 4.2.2 | Software installieren 10 | 1d | 2019-10-07 | 2019-10-07 | 9.5d | start no earlier than 2019-10-07 |
| 141 | 4.2.3 | Nutzerakzeptanzumfrage durchführen 10 | 1d | 2019-10-07 | 2019-10-07 | 9.5d | start no earlier than 2019-10-07 |
| 142 | 4.2.4 | Nutzerakzeptanzumfrage auswerten 10 | 1d | 2019-10-07 | 2019-10-07 | 9.5d | start no earlier than 2019-10-07 |
| 143 | 4.2.5 | Performanceziele überprüfen 10 | 1d | 2019-10-07 | 2019-10-07 | 9.5d | start no earlier than 2019-10-07 |
| 144 | 4.2.6 | Fehler beheben 10 | 1d | 2019-10-07 | 2019-10-07 | 9.5d | start no earlier than 2019-10-07 |
| 145 | 4.2.7 | Schulungskonzept erarbeiten 2 | 1d? | 2019-07-04 | 2019-07-05 | 75d |  |
